# 需求分析甘特图

Schedule from MS Project, 2017-10-06 to 2018-01-30, costs in ¥, A marks actual dates.

## Calendars

- 标准: Mon-Fri 08:00-12:00, 13:00-17:00; Sat-Sun off.

## Resources

| Resource | Rate |
| --- | --- |
| 吴思楠 | 30 |
| 姚天恒 | 30 |
| 叶家威 | 30 |
| 沈舸帆 | 30 |
| 沈家豪 | 30 |
| 汤志东 | 30 |

## Schedule

| ID | WBS | Task | Type | Duration | Start | Finish | Predecessors | Complete | Remaining | Constraint | Resources | Work | Actual work | Cost | Actual cost | 输出 |
| --- | --- | --- | --- | --- | --- | --- | --- | --- | --- | --- | --- | --- | --- | --- | --- | --- |
| 1 | 1 | **需求工程** |  | 83d? | 2017-10-06 A | 2018-01-30 |  | 3% | 80.45d? |  |  | 483.12h | 16h | 14,493.6 | 480 |  |
| 2 | 1.1 | **需求开发过程** |  | 64d | 2017-10-06 A | 2018-01-03 |  | 4% | 61.22d |  |  | 338.16h | 16h | 10,144.8 | 480 |  |
| 3 | 1.1.1 | **需求获取** |  | 32d | 2017-10-06 A | 2017-11-20 |  | 10% | 28.8d |  |  | 80h | 8h | 2,400 | 240 |  |
| 4 | 1.1.1.1 | 编写项目视图与范围文档 | milestone, manual | 1d | 2017-10-06 | 2017-10-06 |  |  |  | start no earlier than 2017-10-06 | 吴思楠 [25%]; 姚天恒 [15%]; 叶家威 [10%]; 沈舸帆 [15%]; 沈家豪 [20%]; 汤志东 [15%] | 8h |  | 240 |  | 项目前景与范围文档 |
| 5 | 1.1.1.2 | 确定需求开发过程 | manual | 1d | 2017-10-09 | 2017-10-09 | 4 |  |  |  | 吴思楠 [20%]; 姚天恒 [20%]; 叶家威 [15%]; 沈舸帆 [15%]; 沈家豪 [20%]; 汤志东 [10%] | 8h |  | 240 |  | 需求工程项目计划 |
| 6 | 1.1.1.3 | 第一次会议 | manual | 1d | 2017-10-15 A | 2017-10-15 A |  | 100% |  |  | 吴思楠 [40%]; 姚天恒 [10%]; 叶家威 [15%]; 沈舸帆 [10%]; 沈家豪 [10%]; 汤志东 [15%] | 8h | 8h | 240 | 240 | 第一次会议记录 |
| 7 | 1.1.1.4 | 用户群分类 | manual | 1d | 2017-11-10 | 2017-11-10 | 5 |  |  | start no earlier than 2017-11-10 | 吴思楠 [15%]; 姚天恒 [20%]; 叶家威 [10%]; 沈舸帆 [20%]; 沈家豪 [20%]; 汤志东 [15%] | 8h |  | 240 |  | 用户分类文档 |
| 8 | 1.1.1.5 | 选择产品代表 | manual | 1d | 2017-11-13 | 2017-11-13 | 7 |  |  |  | 吴思楠 [10%]; 姚天恒 [10%]; 叶家威 [20%]; 沈舸帆 [10%]; 沈家豪 [10%]; 汤志东 [40%] | 8h |  | 240 |  | 产品代表文档 |
| 9 | 1.1.1.6 | 建立核心队伍 | manual | 1d | 2017-11-14 | 2017-11-14 | 8 |  |  |  | 吴思楠 [30%]; 姚天恒 [15%]; 叶家威 [15%]; 沈舸帆 [15%]; 沈家豪 [15%]; 汤志东 [10%] | 8h |  | 240 |  | 核心队伍人员 |
| 10 | 1.1.1.7 | 确定使用实例 | manual | 1d | 2017-11-15 | 2017-11-15 | 9 |  |  |  | 吴思楠 [10%]; 姚天恒 [20%]; 叶家威 [20%]; 沈舸帆 [20%]; 沈家豪 [20%]; 汤志东 [10%] | 8h |  | 240 |  | 使用实例文档 |
| 11 | 1.1.1.8 | 召开应用程序开发联系会议（JAD） | manual | 1d | 2017-11-16 | 2017-11-16 | 10 |  |  |  | 吴思楠 [30%]; 姚天恒 [20%]; 叶家威 [20%]; 沈舸帆 [10%]; 沈家豪 [10%]; 汤志东 [10%] | 8h |  | 240 |  | 需求文档底稿 |
| 12 | 1.1.1.9 | 分析用户工作流程 | manual | 1d | 2017-11-17 | 2017-11-17 | 11 |  |  |  | 吴思楠 [15%]; 姚天恒 [20%]; 叶家威 [20%]; 沈舸帆 [10%]; 沈家豪 [20%]; 汤志东 [15%] | 8h |  | 240 |  | 工作流图 |
| 13 | 1.1.1.10 | 确定质量属性 | milestone, manual | 0d | 2017-11-20 | 2017-11-20 | 12 |  |  |  | 吴思楠; 姚天恒; 叶家威; 沈舸帆; 沈家豪; 汤志东 |  |  |  |  | 质量属性报告文档 |
| 14 | 1.1.1.11 | 检查问题报告 | milestone, manual | 0d | 2017-11-20 | 2017-11-20 | 13 |  |  |  | 吴思楠; 姚天恒; 叶家威; 沈舸帆; 沈家豪; 汤志东 |  |  |  |  | 检查问题报告文档 |
| 15 | 1.1.1.12 | 需求重用 | manual | 1d | 2017-11-20 | 2017-11-20 | 14 |  |  |  | 吴思楠 [20%]; 姚天恒 [20%]; 叶家威 [10%]; 沈舸帆 [15%]; 沈家豪 [20%]; 汤志东 [15%] | 8h |  | 240 |  | 需求重用文档 |
| 16 | 1.1.2 | **需求分析** |  | 34d | 2017-10-20 A | 2017-12-06 | 3 |  | 34d |  |  | 94.4h |  | 2,832 |  |  |
| 17 | 1.1.2.1 | 绘制关联图 | manual | 2d | 2017-11-21 | 2017-11-22 | 6 |  |  |  | 吴思楠 [30%]; 姚天恒 [20%]; 叶家威 [20%]; 沈舸帆 [10%]; 沈家豪 [10%]; 汤志东 [10%] | 16h |  | 480 |  | 关联图 |
| 18 | 1.1.2.2 | 创建开发原型 | milestone, manual | 0d | 2017-11-23 | 2017-11-23 | 17 |  |  | finish no earlier than 2017-10-19 | 吴思楠 [15%]; 姚天恒 [20%]; 叶家威 [20%]; 沈舸帆 [10%]; 沈家豪 [20%]; 汤志东 [15%] |  |  |  |  | 界面原型 |
| 19 | 1.1.2.3 | 分析可行性 | manual | 2d | 2017-11-23 | 2017-11-24 | 18 |  |  |  | 吴思楠 [15%]; 姚天恒 [10%]; 叶家威 [10%]; 沈舸帆 [10%]; 沈家豪 [25%]; 汤志东 [20%] | 14.4h |  | 432 |  | 需求可行性文档 |
| 20 | 1.1.2.4 | 第二次会议 | milestone, manual | 0d | 2017-10-20 A | 2017-10-20 A | 18SS | 100% |  |  | 吴思楠 [40%]; 姚天恒 [10%]; 叶家威 [15%]; 沈舸帆 [10%]; 沈家豪 [10%]; 汤志东 [15%] |  |  |  |  | 第二次会议记录 |
| 21 | 1.1.2.5 | 确定需求优先级 | manual | 2d | 2017-11-27 | 2017-11-28 | 19 |  |  |  | 吴思楠 [25%]; 姚天恒 [15%]; 叶家威 [15%]; 沈舸帆 [15%]; 沈家豪 [15%]; 汤志东 [15%] | 16h |  | 480 |  | 优先级评分表 |
| 22 | 1.1.2.6 | 为需求建立模型 | manual | 2d | 2017-11-29 | 2017-11-30 | 21 |  |  |  | 吴思楠 [20%]; 姚天恒 [15%]; 叶家威 [15%]; 沈舸帆 [15%]; 沈家豪 [20%]; 汤志东 [15%] | 16h |  | 480 |  | 需求模型初版 |
| 23 | 1.1.2.7 | 第三次会议 | milestone, manual | 0d | 2017-10-27 A | 2017-10-27 A | 22SS | 100% |  |  | 吴思楠 [40%]; 姚天恒 [10%]; 叶家威 [15%]; 沈舸帆 [10%]; 沈家豪 [10%]; 汤志东 [15%] |  |  |  |  | 第三次会议记录 |
| 24 | 1.1.2.8 | 编写数据字典 | manual | 2d | 2017-12-01 | 2017-12-04 | 22 |  |  |  | 吴思楠 [10%]; 姚天恒 [20%]; 叶家威 [15%]; 沈舸帆 [20%]; 沈家豪 [15%]; 汤志东 [20%] | 16h |  | 480 |  | 数据字典 |
| 25 | 1.1.2.9 | 第四次会议 | milestone, manual | 0d | 2017-11-02 A | 2017-11-02 A | 22SS | 100% |  |  | 吴思楠 [40%]; 姚天恒 [10%]; 叶家威 [15%]; 沈舸帆 [10%]; 沈家豪 [10%]; 汤志东 [15%] |  |  |  |  | 第四次会议记录 |
| 26 | 1.1.2.10 | 应用质量功能调配 | manual | 2d | 2017-12-05 | 2017-12-06 | 24 |  |  |  | 吴思楠 [15%]; 姚天恒 [15%]; 叶家威 [15%]; 沈舸帆 [20%]; 沈家豪 [20%]; 汤志东 [15%] | 16h |  | 480 |  |  |

| ID | WBS | Task | Type | Duration | Start | Finish | Predecessors | Complete | Remaining | Constraint | Resources | Work | Actual work | Cost | Actual cost | 输出 |
| --- | --- | --- | --- | --- | --- | --- | --- | --- | --- | --- | --- | --- | --- | --- | --- | --- |
| 27 | 1.1.3 | **需求规格说明** |  | 34d | 2017-11-05 A | 2017-12-20 | 16 | 9% | 30.91d |  |  | 88.96h | 8h | 2,668.8 | 240 |  |
| 28 | 1.1.3.1 | 采用软件需求规格说明模板 | manual | 2d | 2017-12-07 | 2017-12-08 | 25 |  |  |  | 吴思楠 [15%]; 姚天恒 [20%]; 叶家威 [15%]; 沈舸帆 [20%]; 沈家豪 [20%]; 汤志东 [10%] | 16h |  | 480 |  | 需求规格说明模板 |
| 29 | 1.1.3.2 | 指明需求来源 | manual | 2d | 2017-12-11 | 2017-12-12 | 28 |  |  |  | 吴思楠 [20%]; 姚天恒 [20%]; 叶家威 [15%]; 沈舸帆 [15%]; 沈家豪 [15%]; 汤志东 [15%] | 16h |  | 480 |  | 确定需求来源 |
| 30 | 1.1.3.3 | 第五次会议 | manual | 1d | 2017-11-05 A | 2017-11-05 A |  | 100% |  |  | 吴思楠 [40%]; 姚天恒 [10%]; 叶家威 [15%]; 沈舸帆 [10%]; 沈家豪 [10%]; 汤志东 [15%] | 8h | 8h | 240 | 240 | 第五次会议记录 |
| 31 | 1.1.3.4 | 为每一项需求注上标号 | manual | 2d | 2017-12-13 | 2017-12-14 | 29 |  |  |  | 吴思楠 [40%]; 姚天恒 [30%]; 叶家威 [20%]; 沈舸帆 [20%]; 沈家豪 [20%]; 汤志东 [10%] | 16.96h |  | 508.8 |  | 需求注上标号 |
| 32 | 1.1.3.5 | 第六次会议 | milestone, manual | 0d | 2017-11-16 A | 2017-11-17 A | 31SS | 100% |  |  | 吴思楠; 沈舸帆; 沈家豪; 汤志东; 姚天恒; 叶家威 |  |  |  |  | 第六次会议记录 |
| 33 | 1.1.3.6 | 记录业务规范 | manual | 2d | 2017-12-15 | 2017-12-18 | 31 |  |  |  | 吴思楠 [20%]; 姚天恒 [15%]; 叶家威 [15%]; 沈舸帆 [15%]; 沈家豪 [20%]; 汤志东 [15%] | 16h |  | 480 |  | 业务规范 |
| 34 | 1.1.3.7 | 创建需求跟踪能力矩阵 | manual | 2d | 2017-12-19 | 2017-12-20 | 33 |  |  |  | 吴思楠 [15%]; 姚天恒 [20%]; 叶家威 [10%]; 沈舸帆 [20%]; 沈家豪 [20%]; 汤志东 [15%] | 16h |  | 480 |  | 需求跟踪能力矩阵 |
| 35 | 1.1.4 | **需求规格审核** |  | 10d | 2017-12-21 | 2018-01-03 | 27 |  |  |  |  | 74.8h |  | 2,244 |  |  |
| 36 | 1.1.4.1 | 第七次会议 | manual | 1d | 2017-12-21 | 2017-12-21 | 37SS |  |  | start no earlier than 2017-11-19 | 吴思楠 [25%] | 2h |  | 60 |  | 会议记录 |
| 37 | 1.1.4.2 | 审查需求文档 | manual | 2d | 2017-12-21 | 2017-12-22 | 27 |  |  |  | 吴思楠 [20%]; 姚天恒 [15%]; 叶家威 [15%]; 沈舸帆 [15%]; 沈家豪 [15%]; 汤志东 [20%] | 16h |  | 480 |  | SRS文档模板 |
| 38 | 1.1.4.3 | 编写测试用例 | manual | 2d | 2017-12-25 | 2017-12-26 | 37 |  |  |  | 吴思楠 [15%]; 姚天恒 [20%]; 叶家威 [15%]; 沈舸帆 [25%]; 沈家豪 [15%]; 汤志东 [10%] | 16h |  | 480 |  | 测试用例 |
| 39 | 1.1.4.4 | 第八次会议 | manual | 1d | 2017-12-25 | 2017-12-25 | 38SS |  |  |  | 吴思楠 [25%] | 2h |  | 60 |  | 第八次会议记录 |
| 40 | 1.1.4.5 | 编写用户手册 | manual | 2d | 2017-12-27 | 2017-12-28 | 38 |  |  |  | 吴思楠 [20%]; 姚天恒 [20%]; 叶家威 [15%]; 沈舸帆 [15%]; 沈家豪 [15%]; 汤志东 [15%] | 16h |  | 480 |  | 用户手册 |
| 41 | 1.1.4.6 | 第九次会议 | manual | 1d | 2017-12-27 | 2017-12-27 | 40SS |  |  |  | 吴思楠 [25%] | 2h |  | 60 |  | 第九次会议记录 |
| 42 | 1.1.4.7 | 编写规格说明修改及审阅2.0 | manual | 1d | 2017-12-29 | 2017-12-29 | 40 |  |  | start no earlier than 2016-11-30 | 吴思楠 [20%]; 姚天恒 [15%]; 叶家威 [15%]; 沈舸帆 [20%]; 沈家豪 [15%]; 汤志东 [15%] | 8h |  | 240 |  | 需求规格说明文档2.0 |
| 43 | 1.1.4.8 | 编写规格说明完成及上交 | milestone, manual | 2d | 2018-01-01 | 2018-01-02 | 42 |  |  |  | 吴思楠 [25%] | 4h |  | 120 |  | 需求规格说明文档3.0 |
| 44 | 1.1.4.9 | 确定合格的标准 | manual | 1d | 2018-01-03 | 2018-01-03 | 43 |  |  |  | 吴思楠 [25%]; 姚天恒 [20%]; 叶家威 [20%]; 沈舸帆 [10%]; 沈家豪 [20%]; 汤志东 [15%] | 8.8h |  | 264 |  | 需求规格说明文档标准 |
| 45 | 1.2 | **需求管理过程** |  | 13d | 2018-01-04 | 2018-01-22 | 2 |  |  |  |  | 106h |  | 3,180 |  |  |
| 46 | 1.2.1 | 确定变更控制过程 | manual | 2d | 2018-01-04 | 2018-01-05 | 35 |  |  |  | 吴思楠 [10%]; 姚天恒 [10%]; 叶家威 [20%]; 沈舸帆 [25%]; 沈家豪 [15%]; 汤志东 [20%] | 16h |  | 480 |  | 需求变更控制文档初版 |
| 47 | 1.2.2 | 第十次会议 | manual | 1d | 2018-01-04 | 2018-01-04 | 46SS |  |  |  | 吴思楠 [25%] | 2h |  | 60 |  | 第十次会议记录 |
| 48 | 1.2.3 | 建立变更控制委员会 | manual | 2d | 2018-01-08 | 2018-01-09 | 46 |  |  |  | 吴思楠 [20%]; 姚天恒 [15%]; 叶家威 [15%]; 沈舸帆 [15%]; 沈家豪 [15%]; 汤志东 [20%] | 16h |  | 480 |  | 确定委员会成员 |
| 49 | 1.2.4 | 进行变更影响分析 | manual | 2d | 2018-01-10 | 2018-01-11 | 48 |  |  |  | 吴思楠 [15%]; 姚天恒 [15%]; 叶家威 [25%]; 沈舸帆 [15%]; 沈家豪 [15%]; 汤志东 [15%] | 16h |  | 480 |  | 分析变更原因 |
| 50 | 1.2.5 | 第十一次会议 | milestone, manual | 0d | 2018-01-10 | 2018-01-10 | 49SS |  |  |  | 吴思楠 [25%] |  |  |  |  | 第十一次会议记录 |
| 51 | 1.2.6 | 跟踪每一项变更 | manual | 2d | 2018-01-12 | 2018-01-15 | 49 |  |  |  | 吴思楠 [15%]; 姚天恒 [10%]; 叶家威 [20%]; 沈舸帆 [20%]; 沈家豪 [15%]; 汤志东 [20%] | 16h |  | 480 |  | 需求变更文档初版 |
| 52 | 1.2.7 | 编写需求文档的基准版本和控制版本 | manual | 1d | 2018-01-16 | 2018-01-16 | 51 |  |  |  | 吴思楠 [20%]; 姚天恒 [15%]; 叶家威 [15%]; 沈舸帆 [15%]; 沈家豪 [15%]; 汤志东 [20%] | 8h |  | 240 |  | 编写需求文档的基准版本和控制版本 |
| 53 | 1.2.8 | 第十二次会议 | milestone, manual | 0d | 2018-01-16 | 2018-01-16 | 52SS |  |  |  | 吴思楠 [25%] |  |  |  |  | 第十二次会议记录 |
| 54 | 1.2.9 | 维护变更历史记录 | manual | 1d | 2018-01-17 | 2018-01-17 | 52 |  |  |  | 吴思楠 [15%]; 姚天恒 [20%]; 叶家威 [20%]; 沈舸帆 [15%]; 沈家豪 [10%]; 汤志东 [20%] | 8h |  | 240 |  | 需求变更文档 |
| 55 | 1.2.10 | 第十三次会议 | milestone, manual | 0d | 2018-01-17 | 2018-01-17 | 54SS |  |  |  | 吴思楠 [25%] |  |  |  |  | 第十三次会议记录 |
| 56 | 1.2.11 | 跟踪需求状态 | manual | 1d | 2018-01-18 | 2018-01-18 | 54 |  |  |  | 吴思楠 [20%]; 姚天恒 [15%]; 叶家威 [15%]; 沈舸帆 [15%]; 沈家豪 [15%]; 汤志东 [20%] | 8h |  | 240 |  | 需求状态文档 |
| 57 | 1.2.12 | 衡量需求稳定性 | manual | 1d | 2018-01-19 | 2018-01-19 | 56 |  |  |  | 吴思楠 [20%]; 姚天恒 [15%]; 叶家威 [20%]; 沈舸帆 [15%]; 沈家豪 [15%]; 汤志东 [15%] | 8h |  | 240 |  | 需求稳定性文档 |
| 58 | 1.2.13 | 第十四次会议 | milestone, manual | 0d | 2018-01-19 | 2018-01-19 | 57SS |  |  |  | 吴思楠 [25%] |  |  |  |  | 第十四次会议记录 |
| 59 | 1.2.14 | 使用需求管理工具 | manual | 1d | 2018-01-22 | 2018-01-22 | 57 |  |  |  | 吴思楠 [20%]; 姚天恒 [20%]; 叶家威 [10%]; 沈舸帆 [15%]; 沈家豪 [15%]; 汤志东 [20%] | 8h |  | 240 |  | 管理需求过程 |

| ID | WBS | Task | Type | Duration | Start | Finish | Predecessors | Total slack | Resources | Work | Cost | 输出 |
| --- | --- | --- | --- | --- | --- | --- | --- | --- | --- | --- | --- | --- |
| 60 | 1.3 | **需求项目总结** |  | 6d | 2018-01-23 | 2018-01-30 | 44 | 0d |  | 38.96h | 1,168.8 |  |
| 61 | 1.3.1 | 项目总结报告 | manual | 1d | 2018-01-23 | 2018-01-23 | 59 |  | 沈舸帆 [17%]; 沈家豪 [17%]; 汤志东 [17%]; 吴思楠 [17%]; 姚天恒 [17%] | 6.8h | 204 | 总结报告 |
| 62 | 1.3.2 | 报告评审 | manual | 1d | 2018-01-24 | 2018-01-24 | 61 |  | 沈舸帆 [17%]; 沈家豪 [17%]; 汤志东 [17%]; 吴思楠 [17%]; 姚天恒 [17%]; 叶家威 [17%] | 8.16h | 244.8 |  |
| 63 | 1.3.3 | 项目总结报告修改 | manual | 1d | 2018-01-25 | 2018-01-25 | 62 |  | 沈舸帆 [15%]; 沈家豪 [20%]; 汤志东 [15%]; 吴思楠 [20%]; 姚天恒 [15%]; 叶家威 [15%] | 8h | 240 | 总结报告 |
| 64 | 1.3.4 | 总结报告上交 | milestone, manual | 0d | 2018-01-26 | 2018-01-26 | 63 |  | 吴思楠 [10%] |  |  |  |
| 65 | 1.3.5 | 项目答辩 | manual | 2d | 2018-01-29 | 2018-01-30 | 64 |  | 沈舸帆 [15%]; 沈家豪 [15%]; 汤志东 [15%]; 吴思楠 [25%]; 姚天恒 [15%]; 叶家威 [15%] | 16h | 480 |  |
