Schedule from MS Project, 2017-09-28 to 2018-01-19, A marks actual dates.

## Calendars

- 标准: Mon-Sun 08:00-12:00, 13:00-17:00. Exceptions (off unless hours are given): 2017-09-30 08:00-12:00, 13:00-17:00, 2017-10-28 to 2017-10-29 08:00-12:00, 13:00-17:00, 2017-11-04 to 2017-11-05 08:00-12:00, 13:00-17:00, 2017-11-18 to 2017-11-19 08:00-12:00, 13:00-17:00.

## Resources

| Resource |
| --- |
| 姚天恒 |
| 吴思楠 |
| 叶家威 |
| 沈舸帆 |
| 沈家豪 |
| 汤志东 |

## Schedule

| ID | WBS | Task | Type | Duration | Start | Finish | Predecessors | Complete | Remaining | Total slack | Constraint | Resources | Work | Actual work | 输出 | 输入 |
| --- | --- | --- | --- | --- | --- | --- | --- | --- | --- | --- | --- | --- | --- | --- | --- | --- |
| 1 | 1 | **需求工程项目准备** |  | 33d? | 2017-09-28 A | 2017-10-30 |  | 92% | 2.76d? | 0d |  |  | 280h | 270.4h |  |  |
| 2 | 1.1 | 人员召集 | manual | 1d | 2017-09-28 A | 2017-09-28 A |  | 100% |  |  |  | 吴思楠 [50%]; 沈家豪 [20%]; 叶家威 [20%]; 汤志东 [10%] | 8h | 8h | 人员名单 |  |
| 3 | 1.2 | 课题选定 | manual | 7d | 2017-09-29 A | 2017-10-05 A | 2 | 100% |  |  |  | 吴思楠 [20%]; 沈家豪 [20%]; 叶家威 [25%]; 姚天恒 [10%]; 沈舸帆 [25%]; 汤志东 [10%] | 56h | 56h |  |  |
| 4 | 1.3 | 软件环境配置 | manual | 8d | 2017-10-01 A | 2017-10-08 A |  | 100% |  |  |  | 叶家威 [20%]; 沈舸帆 [20%]; 沈家豪 [15%]; 汤志东 [15%]; 吴思楠 [15%]; 姚天恒 [15%] | 64h | 64h |  |  |
| 5 | 1.4 | 确定小组名单 | milestone, manual | 1d | 2017-10-09 A | 2017-10-09 A |  | 100% |  |  |  | 吴思楠 [20%]; 姚天恒 [20%]; 沈舸帆 [20%]; 沈家豪 [10%]; 汤志东 [15%]; 叶家威 [15%] | 8h | 8h | 小组名单 | 人员名单 |
| 6 | 1.5 | 项目章程编写 | manual | 1d | 2017-10-11 A | 2017-10-11 A |  | 100% |  |  |  | 吴思楠 [20%]; 姚天恒 [15%]; 叶家威 [15%]; 沈舸帆 [15%]; 沈家豪 [20%]; 汤志东 [15%] | 8h | 8h | 初步的项目章程 |  |
| 7 | 1.6 | 项目章程审核 | manual | 1d | 2017-10-12 A | 2017-10-12 A | 6 | 100% |  |  |  | 吴思楠 [25%]; 姚天恒 [15%]; 叶家威 [15%]; 沈舸帆 [15%]; 沈家豪 [15%]; 汤志东 [15%] | 8h | 8h | 更新后的项目章程 |  |
| 8 | 1.7 | 第一次会议 | manual | 1h | 2017-10-12 A | 2017-10-12 A |  | 100% |  |  |  |  |  |  | 第一次会议记录 |  |
| 9 | 1.8 | <新任务> | manual | 1d? | 2017-09-28 | 2017-09-28 |  |  |  |  |  |  |  |  |  |  |
| 10 | 1.9 | **工程项目计划** |  | 18d | 2017-10-13 A | 2017-10-30 |  | 88% | 2.18d |  |  |  | 128h | 118.4h |  |  |
| 11 | 1.9.1 | 范围管理计划 | manual | 1d | 2017-10-13 A | 2017-10-13 A |  | 100% |  |  |  | 沈家豪 [50%]; 汤志东 [50%] | 8h | 8h | 前景与范围文档 | 选题说明 |
| 12 | 1.9.2 | 人力资源管理计划 |  | 1d? | 2017-10-14 A | 2017-10-14 A |  | 100% |  |  | start no earlier than 2017-10-14 | 沈舸帆 | 8h | 8h | 人力资源管理计划 | 人力资源管理计划模板 |
| 13 | 1.9.3 | 风险管理计划 | manual | 1d | 2017-10-14 A | 2017-10-14 A |  | 100% |  |  |  | 吴思楠 | 8h | 8h | 风险管理计划 | 风险管理计划模板 |
| 14 | 1.9.4 | 成本管理计划 | manual | 1d | 2017-10-15 A | 2017-10-15 A |  | 100% |  |  |  | 叶家威 | 8h | 8h | 成本管理计划 | 成本管理计划模板 |
| 15 | 1.9.5 | 沟通管理计划 | manual | 1d | 2017-10-15 A | 2017-10-15 A |  | 100% |  |  |  | 汤志东 | 8h | 8h | 沟通管理计划 | 沟通管理计划模板 |
| 16 | 1.9.6 | 采购管理计划 | manual | 1d | 2017-10-16 A | 2017-10-16 A |  | 100% |  |  |  | 沈家豪 | 8h | 8h | 采购管理计划 | 采购管理计划模板 |
| 17 | 1.9.7 | 整合计划 | manual | 1d | 2017-10-17 A | 2017-10-17 A | 12, 13, 14, 15, 16 | 100% |  |  |  | 吴思楠 | 8h | 8h | 初步的需求项目工程计划 | 人力资源管理计划，风险管理计划，成本管理计划，沟通管理计划，采购管理计划 |
| 18 | 1.9.8 | 初步分析可行性 | manual | 2d | 2017-10-18 A | 2017-10-19 A | 17 | 100% |  |  |  | 沈家豪 [30%]; 汤志东 [50%]; 叶家威 [20%] | 16h | 16h | 初步的可行性分析报告 | 需求工程项目计划 |
| 19 | 1.9.9 | 第二次会议 | manual | 1d | 2017-10-20 A | 2017-10-20 A |  | 100% |  |  |  |  |  |  | 第二次会议记录 |  |
| 20 | 1.9.10 | **初步确定开发计划** |  | 2d | 2017-10-24 A | 2017-10-25 A |  | 100% |  |  |  |  | 24h | 24h |  |  |
| 21 | 1.9.10.1 | WBS | manual | 1d | 2017-10-24 A | 2017-10-24 A |  | 100% |  |  |  | 姚天恒 [70%]; 沈舸帆 [30%] | 8h | 8h | 初步的WBS |  |
| 22 | 1.9.10.2 | 甘特图 | manual | 1d | 2017-10-25 A | 2017-10-25 A |  | 100% |  |  |  | 姚天恒 | 8h | 8h | 初步的甘特图 |  |
| 23 | 1.9.10.3 | OBS | manual | 1d | 2017-10-25 A | 2017-10-25 A |  | 100% |  |  |  | 沈舸帆 | 8h | 8h | 初步的OBS |  |
| 24 | 1.9.11 | 第三次会议 | manual | 1h | 2017-10-27 A | 2017-10-27 A |  | 100% |  |  |  |  |  |  | 第三次会议记录 |  |
| 25 | 1.9.12 | UML概述PPT | manual | 2d | 2017-10-28 A | 2017-10-29 A |  | 100% |  |  |  | 吴思楠 [50%]; 姚天恒 [50%] | 16h | 16h |  |  |
| 26 | 1.9.13 | 质量保证计划 | manual | 1d | 2017-10-29 A | 2017-10-29 |  | 80% | 0.2d |  |  | 沈舸帆 [25%]; 叶家威 [25%]; 沈家豪 [25%]; 汤志东 [25%] | 8h | 6.4h | 质量保证计划 |  |
| 27 | 1.9.14 | 正式发布软件需求工程项目计划 | milestone, manual | 1d | 2017-10-30 A | 2017-10-30 |  |  | 1d |  |  | 吴思楠 [20%]; 姚天恒 [15%]; 叶家威 [15%]; 沈舸帆 [20%]; 沈家豪 [15%]; 汤志东 [15%] | 8h |  | 软件需求工程项目计划 | 初步的需求项目工程计划 |
| 28 | 1.9.15 | <新任务> | manual | 1d? | 2017-10-13 | 2017-10-13 |  |  |  |  |  |  |  |  |  |  |

| ID | WBS | Task | Type | Duration | Start | Finish | Predecessors | Complete | Remaining | Actual start | Total slack | Free slack | Constraint | Resources | Work | Actual work | 输出 | 输入 |
| --- | --- | --- | --- | --- | --- | --- | --- | --- | --- | --- | --- | --- | --- | --- | --- | --- | --- | --- |
| 29 | 2 | **需求工程** |  | 74d | 2017-10-30 | 2018-01-11 |  | 1% | 72.96d | 2017-10-09 |  |  |  |  | 125.76h | 5.6h |  |  |
| 30 | 2.1 | **需求开发过程** |  | 54d | 2017-10-30 | 2017-12-22 |  | 2% | 52.94d | 2017-10-09 |  |  |  |  | 125.76h | 5.6h |  |  |
| 31 | 2.1.1 | **需求获取** |  | 21d | 2017-10-30 | 2017-11-19 |  | 5% | 19.93d | 2017-10-09 |  |  |  |  | 125.76h | 5.6h |  |  |
| 32 | 2.1.1.1 | 确定需求开发过程 |  | 1d | 2017-10-30 A | 2017-10-30 A |  | 100% |  |  |  |  | start no earlier than 2017-10-30 | 姚天恒 [60%]; 沈舸帆 [40%] | 5.6h | 5.6h | 修改的甘特图 | 初步的甘特图 |
| 33 | 2.1.1.2 | 编写项目视图与范围 | milestone | 2d | 2017-10-31 | 2017-11-01 | 32 |  |  |  | 14d | 0d |  | 吴思楠 [25%]; 叶家威 [25%]; 沈家豪 [25%]; 汤志东 [25%] | 12.16h |  |  |  |
| 34 | 2.1.1.3 | 第四次会议 | manual | 1h | 2017-11-02 A | 2017-11-02 A |  | 100% |  |  |  |  |  |  |  |  | 第四次会议记录 |  |
| 35 | 2.1.1.4 | 用户群分类 |  | 2d | 2017-11-02 | 2017-11-03 | 33 |  |  |  | 14d | 0d |  | 姚天恒 [35%]; 叶家威 [30%]; 沈舸帆 [35%] | 10.08h |  | 用户分类文档 | 选题说明 |
| 36 | 2.1.1.5 | 选择产品代表 |  | 2d | 2017-11-04 | 2017-11-05 | 35 |  |  |  | 14d |  |  | 叶家威 [30%]; 沈家豪 [30%]; 汤志东 [40%] | 8.8h |  | 产品代表文档 | 需求工程项目计划 |
| 37 | 2.1.1.6 | 建立核心队伍 |  | 1d | 2017-10-09 | 2017-10-09 |  |  |  |  | 103d |  | start no earlier than 2017-10-09 | 吴思楠 [20%]; 姚天恒 [15%]; 叶家威 [15%]; 沈舸帆 [15%]; 沈家豪 [15%]; 汤志东 [20%] | 7.52h |  | 核心队伍人员责任表 | 小组名单 |
| 38 | 2.1.1.7 | 用户访谈 | manual | 1d | 2017-11-07 | 2017-11-07 |  |  |  |  |  |  |  | 吴思楠 [30%]; 姚天恒 [30%]; 沈舸帆 [10%]; 汤志东 [10%]; 沈家豪 [10%]; 叶家威 [10%] | 8h |  | 访谈记录 |  |
| 39 | 2.1.1.8 | 确定使用实例 |  | 3d | 2017-11-08 | 2017-11-10 | 38 |  |  |  | 0d |  |  | 姚天恒 [20%]; 沈舸帆 [30%]; 沈家豪 [25%]; 汤志东 [25%] | 24h |  | 使用实例文档 | 访谈记录 |
| 40 | 2.1.1.9 | 召开应用程序开发联系会议 |  | 1d | 2017-11-11 | 2017-11-11 | 39 |  |  |  | 0d |  |  | 吴思楠 [50%]; 姚天恒 [50%] | 8h |  |  |  |
| 41 | 2.1.1.10 | 分析用户工作流程 |  | 2d | 2017-11-12 | 2017-11-13 | 40 |  |  |  | 0d |  |  | 沈家豪 [30%]; 汤志东 [30%]; 叶家威 [40%] | 16h |  | 工作流图 | 需用户分类文档、产品代表文档、使用实例文档 |
| 42 | 2.1.1.11 | 确定质量属性 |  | 2d | 2017-11-14 | 2017-11-15 | 41 |  |  |  | 0d |  |  | 吴思楠 [20%]; 叶家威 [20%]; 沈家豪 [20%]; 汤志东 [40%] | 9.6h |  | 质量属性文档 |  |
| 43 | 2.1.1.12 | 检查报告问题 |  | 2d | 2017-11-16 | 2017-11-17 | 42 |  |  |  | 0d |  |  | 姚天恒 [50%]; 沈舸帆 [25%]; 沈家豪 [25%] | 16h |  | 问题报告 |  |
| 44 | 2.1.1.13 | 需求重用 |  | 2d | 2017-11-18 | 2017-11-19 | 43 |  |  |  | 0d |  |  |  |  |  | 需求重用文档 | 需求工程项目计划 |
| 45 | 2.1.1.14 | <新任务> | manual | 1d? | 2017-10-30 | 2017-10-30 |  |  |  |  |  |  |  |  |  |  |  |  |
| 46 | 2.1.2 | **需求分析** |  | 12d | 2017-11-20 | 2017-12-01 |  |  |  |  |  |  |  |  |  |  |  |  |
| 47 | 2.1.2.1 | 绘制联系图 |  | 2d | 2017-10-26 | 2017-10-27 |  |  |  |  | 23d |  | start no earlier than 2017-10-26 |  |  |  | 关联图 |  |
| 48 | 2.1.2.2 | 创建开发原型 |  | 2d | 2017-11-20 | 2017-11-21 | 47 |  |  |  | 0d |  |  |  |  |  | 界面原型 |  |
| 49 | 2.1.2.3 | 分析可行性 | milestone | 2d | 2017-11-22 | 2017-11-23 | 48 |  |  |  | 0d |  |  |  |  |  | 需求可行性分析文档 | 需求重用文档、需求工程项目计划 |
| 50 | 2.1.2.4 | 确定需求优先级 |  | 2d | 2017-11-24 | 2017-11-25 | 49 |  |  |  | 0d |  |  |  |  |  | 需求优先级文档 | 需求可行性分析文档 |
| 51 | 2.1.2.5 | 为需求建立模型 |  | 2d | 2017-11-26 | 2017-11-27 | 50 |  |  |  | 0d |  |  |  |  |  | 初步的需求模型 | 需求可行性分析文档 |
| 52 | 2.1.2.6 | 编写数据字典 |  | 2d | 2017-11-28 | 2017-11-29 | 51 |  |  |  | 0d |  |  |  |  |  | 数据字典 |  |
| 53 | 2.1.2.7 | 应用质量功能调配 |  | 2d | 2017-11-30 | 2017-12-01 | 52 |  |  |  | 0d |  |  |  |  |  |  |  |
| 54 | 2.1.2.8 | <新任务> | manual | 1d? | 2017-11-20 | 2017-11-20 |  |  |  |  |  |  |  |  |  |  |  |  |

| ID | WBS | Task | Type | Duration | Start | Finish | Predecessors | Total slack | Constraint | 输出 | 输入 |
| --- | --- | --- | --- | --- | --- | --- | --- | --- | --- | --- | --- |
| 55 | 2.1.3 | **需求规格说明** |  | 10d | 2017-12-02 | 2017-12-11 |  |  |  |  |  |
| 56 | 2.1.3.1 | 采用软件需求规格模板 |  | 2d | 2017-12-02 | 2017-12-03 |  | 0d | start no earlier than 2017-12-02 | 初步的SRS文档 | 需求工程项目计划 |
| 57 | 2.1.3.2 | 指明需求来源 |  | 2d | 2017-12-04 | 2017-12-05 | 56 | 0d |  | 需求来源 |  |
| 58 | 2.1.3.3 | 为每一项需求注上标号 |  | 2d | 2017-12-06 | 2017-12-07 | 57 | 0d |  |  |  |
| 59 | 2.1.3.4 | 记录业务规范 |  | 2d | 2017-12-08 | 2017-12-09 | 58 | 0d |  | 业务规范 |  |
| 60 | 2.1.3.5 | 创建需求跟踪能力矩阵 |  | 2d | 2017-12-10 | 2017-12-11 | 59 | 0d |  | 需求跟踪能力矩阵 | 需求来源、初步的SRS文档 |
| 61 | 2.1.3.6 | <新任务> | manual | 1d? | 2017-12-02 | 2017-12-02 |  |  |  |  |  |
| 62 | 2.1.4 | **需求规格审核** |  | 8d | 2017-12-12 | 2017-12-19 |  |  |  |  |  |
| 63 | 2.1.4.1 | 审查需求文档 | milestone | 2d | 2017-12-12 | 2017-12-13 |  | 0d |  | SRS文档模板 | 初步的SRS文档 |
| 64 | 2.1.4.2 | 编写测试用例 |  | 2d | 2017-12-14 | 2017-12-15 | 63 | 0d |  | 测试用例 |  |
| 65 | 2.1.4.3 | 编写用户手册 |  | 2d | 2017-12-16 | 2017-12-17 | 64 | 0d |  | 用户手册 |  |
| 66 | 2.1.4.4 | 确定合格的标准 |  | 2d | 2017-12-18 | 2017-12-19 | 65 | 0d |  | 需求规格说明文档标准 | SRS文档模板 |
| 67 | 2.1.4.5 | <新任务> | manual | 1d? | 2017-12-12 | 2017-12-12 |  |  |  |  |  |
| 68 | 2.2 | 正式发布软件需求规格说明书SRS | manual | 3d | 2017-12-20 | 2017-12-22 |  |  |  |  |  |
| 69 | 2.3 | **需求管理过程** |  | 20d | 2017-12-23 | 2018-01-11 |  |  |  |  |  |
| 70 | 2.3.1 | 确定变更控制过程 |  | 2d | 2017-12-23 | 2017-12-24 |  | 0d |  | 需求变更控制文档初版 |  |
| 71 | 2.3.2 | 建立变更控制委员会 |  | 2d | 2017-12-25 | 2017-12-26 | 70 | 0d |  |  |  |
| 72 | 2.3.3 | 进行变更影响分析 |  | 2d | 2017-12-27 | 2017-12-28 | 71 | 0d |  |  |  |
| 73 | 2.3.4 | 跟踪每一项变更 |  | 2d | 2017-12-29 | 2017-12-30 | 72 | 0d |  | 需求变更文档第二版 | 需求变更控制文档初版 |
| 74 | 2.3.5 | 编写需求文档的基准版本和控制版本 |  | 2d | 2017-12-31 | 2018-01-01 | 73 | 0d |  | 需求文档的基准版本和控制版本 | 需求变更文档第二版 |
| 75 | 2.3.6 | 维护变更历史记录 | milestone | 2d | 2018-01-02 | 2018-01-03 | 74 | 0d |  | 需求变更文档 | 需求变更文档第二版 |
| 76 | 2.3.7 | 跟踪需求状态 |  | 2d | 2018-01-04 | 2018-01-05 | 75 | 0d |  | 需求状态文档 | 需求文档的基准版本和控制版本、需求跟踪能力矩阵 |
| 77 | 2.3.8 | 衡量需求稳定性 |  | 2d | 2018-01-06 | 2018-01-07 | 76 | 0d |  | 需求稳定性文档 | 需求文档的基准版本和控制版本 |
| 78 | 2.3.9 | 使用需求管理工具 |  | 2d | 2018-01-08 | 2018-01-09 | 77 | 0d |  |  |  |
| 79 | 2.3.10 | 软件需求变更文档 | manual | 2d | 2018-01-10 | 2018-01-11 | 78 |  |  |  |  |

| ID | WBS | Task | Type | Duration | Start | Finish | 输出 | 输入 |
| --- | --- | --- | --- | --- | --- | --- | --- | --- |
| 80 | 3 | **软件概要设计说明** |  | 3d | 2018-01-12 | 2018-01-14 |  |  |
| 81 | 3.1 | 数据库设计 | manual | 1d | 2018-01-12 | 2018-01-12 | 数据库结构图 | 软件需求规格说明书 |
| 82 | 3.2 | UML建模 | manual | 1d | 2018-01-12 | 2018-01-12 | UML | 软件需求规格说明书 |
| 83 | 3.3 | 架构设计 | manual | 1d | 2018-01-13 | 2018-01-13 |  |  |
| 84 | 3.4 | 接口设计 | manual | 1d | 2018-01-13 | 2018-01-13 |  |  |
| 85 | 3.5 | 模块设计 | manual | 1d | 2018-01-13 | 2018-01-13 |  |  |
| 86 | 3.6 | <新任务> | manual | 1d? | 2018-01-12 | 2018-01-12 |  |  |
| 87 | 4 | 软件维护计划 | manual | 2d | 2018-01-14 | 2018-01-15 |  |  |
| 88 | 5 | 项目收尾——评审 | milestone, manual | 1d | 2018-01-19 | 2018-01-19 | 项目总结 |  |
