Schedule from MS Project, 2017-09-28 to 2018-01-20, costs in ¥, A marks actual dates.

## Calendars

- 标准: Mon-Sun 08:00-12:00, 13:00-17:00. Exceptions (off unless hours are given): 2017-09-30 08:00-12:00, 13:00-17:00, 2017-10-28 to 2017-10-29 08:00-12:00, 13:00-17:00, 2017-11-04 to 2017-11-05 08:00-12:00, 13:00-17:00, 2017-11-18 to 2017-11-19 08:00-12:00, 13:00-17:00.

## Resources

| Resource | Rate |
| --- | --- |
| 姚天恒 | 30.97 |
| 吴思楠 | 30.97 |
| 叶家威 | 30.97 |
| 沈舸帆 | 30.97 |
| 沈家豪 | 30.97 |
| 汤志东 | 30.97 |

## Schedule

| ID | WBS | Task | Type | Duration | Start | Finish | Predecessors | Complete | Constraint | Resources | Work | Actual work | Cost | Actual cost | 输出 | 输入 |
| --- | --- | --- | --- | --- | --- | --- | --- | --- | --- | --- | --- | --- | --- | --- | --- | --- |
| 1 | 1 | **需求工程项目准备** |  | 33d? | 2017-09-28 A | 2017-10-30 A |  | 100% |  |  | 179.9h | 179.9h | 5,571.5 | 5,571.5 |  |  |
| 2 | 1.1 | 人员召集 | manual | 1d | 2017-09-28 A | 2017-09-28 A |  | 100% |  | 吴思楠 [50%]; 沈家豪 [20%]; 叶家威 [20%]; 汤志东 [10%] | 3.8h | 3.8h | 117.69 | 117.69 | 人员名单 |  |
| 3 | 1.2 | 课题选定 | manual | 7d | 2017-09-29 A | 2017-10-05 A | 2 | 100% |  | 吴思楠 [20%]; 沈家豪 [20%]; 叶家威 [25%]; 姚天恒 [10%]; 沈舸帆 [25%]; 汤志东 [10%] | 40.8h | 40.8h | 1,263.58 | 1,263.58 |  |  |
| 4 | 1.3 | 软件环境配置 | manual | 8d | 2017-10-01 A | 2017-10-08 A |  | 100% |  | 叶家威 [20%]; 沈舸帆 [20%]; 沈家豪 [15%]; 汤志东 [15%]; 吴思楠 [15%]; 姚天恒 [15%] | 55h | 55h | 1,703.35 | 1,703.35 |  |  |
| 5 | 1.4 | 确定小组名单 | milestone, manual | 1d | 2017-10-09 A | 2017-10-09 A | 2 | 100% |  | 吴思楠 [20%]; 姚天恒 [20%]; 沈舸帆 [20%]; 沈家豪 [10%]; 汤志东 [15%]; 叶家威 [15%] | 6h | 6h | 185.82 | 185.82 | 小组名单 | 人员名单 |
| 6 | 1.5 | 项目章程编写 | manual | 1d | 2017-10-11 A | 2017-10-11 A | 5 | 100% |  | 吴思楠 [20%]; 姚天恒 [15%]; 叶家威 [15%]; 沈舸帆 [15%]; 沈家豪 [20%]; 汤志东 [15%] | 6.2h | 6.2h | 192.01 | 192.01 | 初步的项目章程 |  |
| 7 | 1.6 | 项目章程审核 | manual | 1d | 2017-10-12 A | 2017-10-12 A | 6 | 100% |  | 吴思楠 [25%]; 姚天恒 [15%]; 叶家威 [15%]; 沈舸帆 [15%]; 沈家豪 [15%]; 汤志东 [15%] | 6.4h | 6.4h | 198.21 | 198.21 | 更新后的项目章程 |  |
| 8 | 1.7 | 第一次会议 | manual | 1h | 2017-10-12 A | 2017-10-12 A | 5 | 100% |  | 吴思楠 [50%]; 叶家威 [50%] | 1h | 1h | 30.97 | 30.97 | 第一次会议记录 |  |
| 9 | 1.8 | **工程项目计划** |  | 18d | 2017-10-13 A | 2017-10-30 A |  | 100% |  |  | 60.7h | 60.7h | 1,879.88 | 1,879.88 |  |  |
| 10 | 1.8.1 | 范围管理计划 | manual | 1d | 2017-10-13 A | 2017-10-14 A | 5 | 100% |  | 沈家豪 [30%]; 汤志东 [30%]; 姚天恒 [40%] | 5.6h | 5.6h | 173.43 | 173.43 | 前景与范围文档 | 选题说明 |
| 11 | 1.8.2 | 人力资源管理计划 |  | 0.25d | 2017-10-14 A | 2017-10-14 A | 5 | 100% | start no earlier than 2017-10-14 | 沈舸帆 | 2h | 2h | 61.94 | 61.94 | 人力资源管理计划 | 人力资源管理计划模板 |
| 12 | 1.8.3 | 风险管理计划 | manual | 0.25d | 2017-10-14 A | 2017-10-14 A | 5 | 100% |  | 吴思楠 | 2h | 2h | 61.94 | 61.94 | 风险管理计划 | 风险管理计划模板 |
| 13 | 1.8.4 | 成本管理计划 | manual | 0.25d | 2017-10-15 A | 2017-10-15 A | 5 | 100% |  | 叶家威 | 2h | 2h | 61.94 | 61.94 | 成本管理计划 | 成本管理计划模板 |
| 14 | 1.8.5 | 沟通管理计划 | manual | 0.25d | 2017-10-15 A | 2017-10-15 A | 5 | 100% |  | 汤志东 | 2h | 2h | 61.94 | 61.94 | 沟通管理计划 | 沟通管理计划模板 |
| 15 | 1.8.6 | 采购管理计划 | manual | 0.25d | 2017-10-16 A | 2017-10-16 A | 5 | 100% |  | 沈家豪 | 2h | 2h | 61.94 | 61.94 | 采购管理计划 | 采购管理计划模板 |
| 16 | 1.8.7 | 整合计划 | manual | 0.75d | 2017-10-17 A | 2017-10-18 A | 11, 12, 13, 14, 15 | 100% |  | 吴思楠 [50%]; 姚天恒 [50%] | 4h | 4h | 123.88 | 123.88 | 初步的需求项目工程计划 | 人力资源管理计划，风险管理计划，成本管理计划，沟通管理计划，采购管理计划 |
| 17 | 1.8.8 | 初步分析可行性 | manual | 2d | 2017-10-18 A | 2017-10-20 A | 16 | 100% |  | 沈家豪 [25%]; 汤志东 [25%]; 叶家威 [25%]; 姚天恒 [25%] | 10h | 10h | 309.7 | 309.7 | 初步的可行性分析报告 | 需求工程项目计划 |
| 18 | 1.8.9 | 第二次会议 | manual | 1h | 2017-10-20 A | 2017-10-21 A |  | 100% |  | 吴思楠 [50%]; 叶家威 [50%] | 1h | 1h | 30.97 | 30.97 | 第二次会议记录 |  |
| 19 | 1.8.10 | **初步确定开发计划** |  | 2d | 2017-10-24 A | 2017-10-25 A |  | 100% |  |  | 10.5h | 10.5h | 325.19 | 325.19 |  |  |
| 20 | 1.8.10.1 | WBS | manual | 2d | 2017-10-24 A | 2017-10-25 A |  | 100% |  | 姚天恒 [70%]; 沈舸帆 [30%] | 6.5h | 6.5h | 201.31 | 201.31 | 初步的WBS |  |
| 21 | 1.8.10.2 | 甘特图 | manual | 0.25d | 2017-10-25 A | 2017-10-25 A |  | 100% |  | 姚天恒 | 2h | 2h | 61.94 | 61.94 | 初步的甘特图 |  |
| 22 | 1.8.10.3 | OBS | manual | 0.25d | 2017-10-25 A | 2017-10-25 A |  | 100% |  | 沈舸帆 | 2h | 2h | 61.94 | 61.94 | 初步的OBS |  |
| 23 | 1.8.11 | 第三次会议 | manual | 1h | 2017-10-27 A | 2017-10-27 A |  | 100% |  | 吴思楠 [50%]; 叶家威 [50%] | 1h | 1h | 30.97 | 30.97 | 第三次会议记录 |  |
| 24 | 1.8.12 | UML概述PPT | manual | 1d | 2017-10-28 A | 2017-10-28 A |  | 100% |  | 吴思楠 [50%]; 姚天恒 [50%] | 6h | 6h | 185.82 | 185.82 |  |  |
| 25 | 1.8.13 | 质量保证计划 | manual | 0.75d | 2017-10-29 A | 2017-10-29 A |  | 100% |  | 沈舸帆 [25%]; 叶家威 [25%]; 沈家豪 [25%]; 汤志东 [25%] | 6h | 6h | 185.82 | 185.82 | 质量保证计划 |  |
| 26 | 1.8.14 | 正式发布软件需求工程项目计划 | milestone, manual | 1d | 2017-10-30 A | 2017-10-30 A | 16, 17 | 100% |  | 吴思楠 [20%]; 姚天恒 [15%]; 叶家威 [15%]; 沈舸帆 [20%]; 沈家豪 [15%]; 汤志东 [15%] | 6.6h | 6.6h | 204.4 | 204.4 | 软件需求工程项目计划 | 初步的需求项目工程计划 |

| ID | WBS | Task | Type | Duration | Start | Finish | Predecessors | Complete | Remaining | Actual start | Total slack | Free slack | Constraint | Resources | Work | Actual work | Cost | Actual cost | 输出 | 输入 |
| --- | --- | --- | --- | --- | --- | --- | --- | --- | --- | --- | --- | --- | --- | --- | --- | --- | --- | --- | --- | --- |
| 27 | 2 | **需求工程开发过程** |  | 54d | 2017-10-30 | 2017-12-22 | 1, 26 | 13% | 46.78d | 2017-10-09 |  |  |  |  | 97.1h | 30.5h | 2,932.89 | 870.26 |  |  |
| 28 | 2.1 | **需求获取** |  | 31d | 2017-10-30 | 2017-11-29 | 26 | 30% | 21.65d | 2017-10-09 |  |  |  |  | 97.1h | 30.5h | 2,932.89 | 870.26 |  |  |
| 29 | 2.1.1 | 确定需求开发过程 |  | 1d | 2017-10-30 A | 2017-10-30 A |  | 100% |  |  |  |  | start no earlier than 2017-10-30 | 姚天恒 [60%]; 沈舸帆 [40%] | 5.2h | 5.2h | 161.04 | 161.04 | 修改的甘特图 | 初步的甘特图 |
| 30 | 2.1.2 | 第四次会议 | manual | 1h | 2017-11-02 A | 2017-11-02 A |  | 100% |  |  |  |  |  | 吴思楠 [50%]; 叶家威 [50%] | 1h | 1h | 30.97 | 30.97 | 第四次会议记录 |  |
| 31 | 2.1.3 | 第一次评审 | milestone, manual | 1h | 2017-10-31 A | 2017-10-31 A | 26 | 100% |  |  |  |  |  | 吴思楠 | 1h | 1h | 30.97 | 30.97 | 评审结果（糟糕） |  |
| 32 | 2.1.4 | UML工具PPT | manual | 1d | 2017-11-09 A | 2017-11-09 A |  | 100% |  |  |  |  |  | 吴思楠 | 2h | 2h | 61.94 | 61.94 |  |  |
| 33 | 2.1.5 | 第五次会议 | manual | 1h | 2017-11-09 A | 2017-11-09 A |  | 100% |  |  |  |  |  | 姚天恒 [50%]; 叶家威 [50%] | 1h | 1h | 30.97 | 30.97 |  |  |
| 34 | 2.1.6 | UML基础I | manual | 0.75d | 2017-11-14 A | 2017-11-14 A |  | 100% |  |  |  |  |  | 吴思楠 | 6h | 6h | 185.82 | 185.82 |  |  |
| 35 | 2.1.7 | 建立核心队伍 |  | 1d | 2017-10-09 A | 2017-10-09 A |  | 100% |  |  |  |  | start no earlier than 2017-10-09 | 吴思楠 [20%]; 姚天恒 [15%]; 叶家威 [15%]; 沈舸帆 [15%]; 沈家豪 [15%]; 汤志东 [20%] | 6.9h | 6.9h | 213.69 | 213.69 | 核心队伍人员责任表 | 小组名单 |
| 36 | 2.1.8 | 第六次会议 | manual | 1h | 2017-11-16 A | 2017-11-16 A |  | 100% |  |  |  |  |  | 姚天恒 [50%]; 叶家威 [50%] | 1h | 1h | 30.97 | 30.97 |  |  |
| 37 | 2.1.9 | 初步确定使用实例 |  | 1d | 2017-11-16 A | 2017-11-16 |  | 50% | 0.5d |  | 65d |  | start no earlier than 2017-11-16 | 姚天恒 [20%]; 沈舸帆 [30%]; 沈家豪 [25%]; 汤志东 [25%] | 8h | 4h | 247.76 | 123.88 | 使用实例文档 | 访谈记录 |
| 38 | 2.1.10 | 初步界面原型编写 | manual | 1.5d | 2017-11-16 A | 2017-11-17 |  | 20% | 1.2d |  |  |  |  | 沈舸帆 [60%]; 叶家威 [40%] | 12h | 2.4h | 297.31 |  | 初步的界面原型 |  |
| 39 | 2.1.11 | 用户访谈 | manual | 1d | 2017-11-22 | 2017-11-22 | 29, 31 |  |  |  |  |  |  | 吴思楠 [30%]; 姚天恒 [30%]; 沈舸帆 [10%]; 汤志东 [10%]; 沈家豪 [10%]; 叶家威 [10%] | 6h |  | 185.82 |  | 访谈记录 |  |
| 40 | 2.1.12 | 编写项目视图与范围 | milestone | 1d | 2017-11-23 | 2017-11-23 | 39 |  |  |  | 58d |  | start no earlier than 2017-11-11 | 吴思楠 [25%]; 叶家威 [25%]; 沈家豪 [25%]; 汤志东 [25%] | 5.7h |  | 176.53 |  |  |  |
| 41 | 2.1.13 | 用户群分类 |  | 1d | 2017-11-23 | 2017-11-23 | 39 |  |  |  | 6d |  |  | 姚天恒 [35%]; 叶家威 [30%]; 沈舸帆 [35%] | 7.2h |  | 223.02 |  | 用户分类文档 | 选题说明 |
| 42 | 2.1.14 | 选择产品代表 |  | 1d | 2017-11-23 | 2017-11-23 | 39 |  |  |  | 4d | 0d |  | 叶家威 [30%]; 沈家豪 [30%]; 汤志东 [40%] | 6.4h |  | 198.21 |  | 产品代表文档 | 需求工程项目计划 |
| 43 | 2.1.15 | 确定使用实例 | manual | 1d | 2017-11-24 | 2017-11-24 | 42 |  |  |  |  |  |  |  |  |  |  |  |  |  |
| 44 | 2.1.16 | 召开应用程序开发联系会议 |  | 1d | 2017-11-25 | 2017-11-25 | 43 |  |  |  | 4d | 0d |  | 吴思楠 [50%]; 姚天恒 [50%] | 8h |  | 247.76 |  |  |  |
| 45 | 2.1.17 | 分析用户工作流程 |  | 1d | 2017-11-26 | 2017-11-26 | 44 |  |  |  | 52d | 0d | finish no earlier than 2017-11-16 | 沈家豪 [30%]; 汤志东 [30%]; 叶家威 [40%] | 7.4h |  | 229.18 |  | 工作流图 | 需用户分类文档、产品代表文档、使用实例文档 |
| 46 | 2.1.18 | 确定质量属性 |  | 1d | 2017-11-27 | 2017-11-27 | 45 |  |  |  | 52d | 0d | finish no earlier than 2017-11-17 | 吴思楠 [20%]; 叶家威 [20%]; 沈家豪 [20%]; 汤志东 [40%] | 6.3h |  | 195.11 |  | 质量属性文档 |  |
| 47 | 2.1.19 | 检查报告问题 |  | 1d | 2017-11-28 | 2017-11-28 | 46 |  |  |  | 52d | 0d | finish no earlier than 2017-11-18 | 姚天恒 [50%]; 沈舸帆 [25%]; 沈家豪 [25%] | 6h |  | 185.82 |  | 问题报告 |  |
| 48 | 2.1.20 | 需求重用 |  | 1d | 2017-11-29 | 2017-11-29 | 47 |  |  |  | 52d |  | finish no earlier than 2017-11-19 |  |  |  |  |  | 需求重用文档 | 需求工程项目计划 |
| 49 | 2.2 | **需求分析** |  | 7d | 2017-11-30 | 2017-12-06 | 28 |  |  |  |  |  |  |  |  |  |  |  |  |  |
| 50 | 2.2.1 | 绘制联系图 |  | 1d | 2017-11-30 | 2017-11-30 | 28 |  |  |  | 0d |  | start no earlier than 2017-11-20 |  |  |  |  |  | 关联图 |  |
| 51 | 2.2.2 | 创建开发原型 |  | 1d | 2017-12-01 | 2017-12-01 | 50 |  |  |  | 0d |  |  |  |  |  |  |  | 界面原型 |  |
| 52 | 2.2.3 | 分析可行性 | milestone | 1d | 2017-12-02 | 2017-12-02 | 51 |  |  |  | 0d |  |  |  |  |  |  |  | 需求可行性分析文档 | 需求重用文档、需求工程项目计划 |
| 53 | 2.2.4 | 确定需求优先级 |  | 1d | 2017-12-03 | 2017-12-03 | 52 |  |  |  | 0d |  |  |  |  |  |  |  | 需求优先级文档 | 需求可行性分析文档 |
| 54 | 2.2.5 | 为需求建立模型 |  | 1d | 2017-12-04 | 2017-12-04 | 53 |  |  |  | 0d |  |  |  |  |  |  |  | 初步的需求模型 | 需求可行性分析文档 |
| 55 | 2.2.6 | 编写数据字典 |  | 1d | 2017-12-05 | 2017-12-05 | 54 |  |  |  | 0d |  |  |  |  |  |  |  | 数据字典 |  |
| 56 | 2.2.7 | 应用质量功能调配 |  | 1d | 2017-12-06 | 2017-12-06 | 55 |  |  |  | 0d |  |  |  |  |  |  |  |  |  |

| ID | WBS | Task | Type | Duration | Start | Finish | Predecessors | Total slack | Free slack | Constraint | 输出 | 输入 |
| --- | --- | --- | --- | --- | --- | --- | --- | --- | --- | --- | --- | --- |
| 57 | 2.3 | **需求规格说明** |  | 6d | 2017-12-07 | 2017-12-12 | 49 |  |  |  |  |  |
| 58 | 2.3.1 | 采用软件需求规格模板 |  | 1d | 2017-12-07 | 2017-12-07 |  | 0d |  | start no earlier than 2017-12-07 | 需求规格模板 | 需求工程项目计划 |
| 59 | 2.3.2 | 指明需求来源 |  | 1d | 2017-12-08 | 2017-12-08 | 58 | 0d |  |  | 需求来源 |  |
| 60 | 2.3.3 | 为每一项需求注上标号 |  | 1d | 2017-12-09 | 2017-12-09 | 59 | 0d |  |  |  |  |
| 61 | 2.3.4 | 记录业务规范 |  | 1d | 2017-12-10 | 2017-12-10 | 60 | 0d |  |  | 业务规范 |  |
| 62 | 2.3.5 | 创建需求跟踪能力矩阵 |  | 1d | 2017-12-11 | 2017-12-11 | 61 | 0d |  |  | 需求跟踪能力矩阵 | 需求来源，需求规格模板 |
| 63 | 2.3.6 | 编写软件需求规格说明书 | manual | 1d | 2017-12-12 | 2017-12-12 | 62 |  |  |  | 初步的SRS文档 | 需求规格模板 |
| 64 | 2.4 | **需求规格审核** |  | 8d | 2017-12-14 | 2017-12-21 | 57 |  |  |  |  |  |
| 65 | 2.4.1 | 审查需求文档 | milestone | 2d | 2017-12-14 | 2017-12-15 | 63 | 0d |  |  | SRS文档模板 | 初步的SRS文档 |
| 66 | 2.4.2 | 编写测试用例 |  | 2d | 2017-12-16 | 2017-12-17 | 65 | 0d |  |  | 测试用例 |  |
| 67 | 2.4.3 | 编写用户手册 |  | 2d | 2017-12-18 | 2017-12-19 | 66 | 0d |  |  | 用户手册 |  |
| 68 | 2.4.4 | 确定合格的标准 |  | 2d | 2017-12-20 | 2017-12-21 | 67 | 0d |  |  | 需求规格说明文档标准 | SRS文档模板 |
| 69 | 3 | 正式发布软件需求规格说明书SRS | manual | 2d | 2017-12-14 | 2017-12-15 | 49, 57 |  |  |  |  |  |
| 70 | 4 | **需求管理过程** |  | 21d | 2017-12-24 | 2018-01-13 | 69 |  |  |  |  |  |
| 71 | 4.1 | 确定变更控制过程 |  | 2d | 2017-12-24 | 2017-12-25 | 69 | 3d | 0d |  | 需求变更控制文档初版 |  |
| 72 | 4.2 | 建立变更控制委员会 |  | 2d | 2017-12-26 | 2017-12-27 | 71 | 3d | 0d |  |  |  |
| 73 | 4.3 | 进行变更影响分析 |  | 2d | 2017-12-28 | 2017-12-29 | 72 | 3d | 0d |  |  |  |
| 74 | 4.4 | 跟踪每一项变更 |  | 2d | 2017-12-30 | 2017-12-31 | 73 | 3d | 0d |  | 需求变更文档第二版 | 需求变更控制文档初版 |
| 75 | 4.5 | 编写需求文档的基准版本和控制版本 |  | 2d | 2018-01-01 | 2018-01-02 | 74 | 3d | 0d |  | 需求文档的基准版本和控制版本 | 需求变更文档第二版 |
| 76 | 4.6 | 维护变更历史记录 | milestone | 2d | 2018-01-03 | 2018-01-04 | 75 | 3d | 0d |  | 需求变更文档 | 需求变更文档第二版 |
| 77 | 4.7 | 跟踪需求状态 |  | 2d | 2018-01-05 | 2018-01-06 | 76 | 3d | 0d |  | 需求状态文档 | 需求文档的基准版本和控制版本、需求跟踪能力矩阵 |
| 78 | 4.8 | 衡量需求稳定性 |  | 2d | 2018-01-07 | 2018-01-08 | 77 | 3d | 0d |  | 需求稳定性文档 | 需求文档的基准版本和控制版本 |
| 79 | 4.9 | 使用需求管理工具 |  | 2d | 2018-01-09 | 2018-01-10 | 78 | 3d | 0d |  |  |  |
| 80 | 5 | 发布软件需求变更文档 | milestone, manual | 2d | 2018-01-11 | 2018-01-12 | 79 |  |  |  |  |  |

| ID | WBS | Task | Type | Duration | Start | Finish | Predecessors | 输出 | 输入 |
| --- | --- | --- | --- | --- | --- | --- | --- | --- | --- |
| 81 | 6 | **软件概要设计说明** |  | 4d | 2018-01-14 | 2018-01-17 | 69 |  |  |
| 82 | 6.1 | 数据库设计 | manual | 1d | 2018-01-14 | 2018-01-14 |  | 数据库结构图 | 软件需求规格说明书 |
| 83 | 6.2 | UML建模 | manual | 1d | 2018-01-15 | 2018-01-15 |  | UML | 软件需求规格说明书 |
| 84 | 6.3 | 架构设计 | manual | 1d | 2018-01-15 | 2018-01-15 |  |  |  |
| 85 | 6.4 | 接口设计 | manual | 1d | 2018-01-16 | 2018-01-16 |  |  |  |
| 86 | 6.5 | 模块设计 | manual | 1d | 2018-01-16 | 2018-01-16 |  |  |  |
| 87 | 6.6 | 发布软件概要设计说明 | manual | 1d | 2017-11-17 | 2017-11-17 |  |  |  |
| 88 | 7 | 软件维护计划 | manual | 2d | 2018-01-17 | 2018-01-18 | 69, 80 |  |  |
| 89 | 8 | 项目收尾——评审 | milestone, manual | 1d | 2018-01-20 | 2018-01-20 | 69, 80 | 项目总结 |  |
